# G3.0 伏羲

Schedule from a web Gantt chart, 2025-03-17 to 2026-11-01.
Every day is a working day

## Schedule

| ID | WBS | Task | Duration | Start | Finish | Predecessors | Complete | inPeople | Status |
| --- | --- | --- | --- | --- | --- | --- | --- | --- | --- |
| 2 | 1 | Kick-off meeting | 1d | 2025-03-17 | 2025-03-17 |  | 100% | 胡逸凡 | done |
| 3 | 2 | **1st 2FP lot - B91582** | 217d | 2025-04-05 | 2025-11-07 |  | 100% |  | done |
| 4 | 2.1 | wafer process | 30d | 2025-04-05 | 2025-05-04 |  | 100% |  | done |
| 5 | 2.2 | Assembly | 35d | 2025-05-05 | 2025-06-08 | 4 | 100% |  | done |
| 6 | 2.3 | 短路耐量验证 | 13d | 2025-10-26 | 2025-11-07 |  | 100% | 杨荣 | done |
| 7 | 3 | **短路耐量验证 Lot** | 112d | 2025-09-21 | 2026-01-10 |  | 100% |  | done |
| 8 | 3.1 | CIP lot Wafer Process | 27d | 2025-09-21 | 2025-10-17 |  | 100% |  | done |
| 9 | 3.2 | F/O | 3d | 2025-10-18 | 2025-10-20 | 8 | 100% |  | done |
| 10 | 3.3 | **RDL** | 33d | 2025-10-21 | 2025-11-22 | 9 | 100% |  | done |
| 11 | 3.3.1 | RDL下线 | 11d | 2025-10-21 | 2025-10-31 |  | 100% |  | done |
| 12 | 3.3.2 | 厂外CP测试 | 6d | 2025-11-01 | 2025-11-06 | 11 | 100% |  | done |
| 13 | 3.3.3 | RDL完成 | 16d | 2025-11-07 | 2025-11-22 | 12 | 100% |  | done |
| 14 | 3.4 | TOLL封装(含die trace) | 30d | 2025-11-23 | 2025-12-22 | 10 | 100% |  | done |
| 15 | 3.5 | 短路耐量验证 | 19d | 2025-12-23 | 2026-01-10 | 14 | 100% |  | done |
| 16 | 4 | **3FP + 2M + M.S. (Pre-Qual. lot)** | 236d | 2025-10-08 | 2026-05-31 |  | 35% |  |  |
| 17 | 4.1 | Wafer Process | 49d | 2025-10-08 | 2025-11-25 |  | 100% |  | done |
| 18 | 4.2 | RDL & CP | 36d | 2025-11-26 | 2025-12-31 |  | 100% |  | done |
| 19 | 4.3 | **短路耐量确认** | 65d | 2025-12-26 | 2026-02-28 |  |  |  |  |
| 20 | 4.3.1 | TOLL Assemby | 52d | 2025-12-26 | 2026-02-15 |  |  |  |  |
| 21 | 4.3.2 | 短路耐量测试 | 13d | 2026-02-16 | 2026-02-28 | 20 |  |  | waiting |
| 22 | 4.4 | **可靠性(TC/..)验证** | 93d | 2026-02-28 | 2026-05-31 |  |  |  | waiting |
| 23 | 4.4.1 | RDL减薄 | 1d | 2026-02-28 | 2026-02-28 |  |  |  | waiting |
| 24 | 4.4.2 | TOLL Assembly | 25d | 2026-02-28 | 2026-03-24 |  |  |  | waiting |
| 25 | 4.4.3 | FT | 7d | 2026-03-25 | 2026-03-31 | 24 |  |  | waiting |
| 26 | 4.4.4 | RE | 61d | 2026-04-01 | 2026-05-31 | 25 |  |  | waiting |

| ID | WBS | Task | Duration | Start | Finish | Predecessors | Status |
| --- | --- | --- | --- | --- | --- | --- | --- |
| 27 | 5 | **Formal Qual.** | 154d | 2026-06-01 | 2026-11-01 | 26 | waiting |
| 28 | 5.1 | Wafer | 25d | 2026-06-01 | 2026-06-25 |  | waiting |
| 29 | 5.2 | RDL+CP | 31d | 2026-06-26 | 2026-07-26 | 28 | waiting |
| 30 | 5.3 | TOLL封装+FT | 37d | 2026-07-27 | 2026-09-01 | 29 | waiting |
| 31 | 5.4 | RE | 61d | 2026-09-02 | 2026-11-01 | 30 | waiting |
